# ls_workplan

Schedule from MS Project, 2005-04-03 to 2007-02-18, status date 2005-04-03, A marks actual dates.
NESS

## Calendars

- סטנדרטי: Mon-Thu 08:00-12:00, 13:00-17:00; Fri-Sat off; Sun 08:00-12:00, 13:00-17:00. Exceptions (off unless hours are given): 2005-04-24 to 2005-04-26, 2005-05-11 to 2005-05-12, 2005-06-12 to 2005-06-13, 2005-10-03 to 2005-10-05, 2005-10-12 to 2005-10-13, 2005-10-17 to 2005-10-18, 2005-10-24 to 2005-10-25, 2006-04-12 to 2006-04-13, 2006-04-18 to 2006-04-19, 2006-05-02 to 2006-05-03, 2006-06-01, 2006-09-24, 2006-10-01 to 2006-10-02.

## Resources

| Resource |
| --- |
| AE |
| Oded Nissan |
| Ran Potstar |
| ECI |
| Nachi |

## Schedule

| ID | WBS | Task | Type | Duration | Start | Finish | Predecessors | Complete | Remaining | Total slack | Free slack | Constraint | Resources | Work | Actual work |
| --- | --- | --- | --- | --- | --- | --- | --- | --- | --- | --- | --- | --- | --- | --- | --- |
| 1 | 1 | **XSM SDH 2nd phase** |  | 465d? | 2005-04-03 A | 2007-02-18 |  | 49% | 237.78d? | 0d |  |  |  | 1752h | 992h |
| 2 | 1.1 | **Design** |  | 10d | 2005-04-03 A | 2005-04-14 A |  | 100% |  |  |  |  |  | 80h | 80h |
| 3 | 1.1.1 | Design Document |  | 10d | 2005-04-03 A | 2005-04-14 A |  | 100% |  |  |  |  | AE | 80h | 80h |
| 4 | 1.2 | **Implementation** |  | 445d? | 2005-05-04 A | 2007-02-18 |  | 46% | 241.26d? | 0d |  |  |  | 1672h | 912h |
| 5 | 1.2.1 | **Integration vs. EMS XDM** |  | 31d | 2005-07-24 A | 2005-09-04 A |  | 100% |  |  |  |  | Oded Nissan | 360h | 360h |
| 6 | 1.2.1.1 | EMS-OSS connection establishment |  | 8d | 2005-07-24 A | 2005-08-18 A |  | 100% |  |  |  |  |  | 72h | 72h |
| 7 | 1.2.1.2 | EMS-OSS comand/response |  | 10d | 2005-08-22 A | 2005-09-04 A | 6 | 100% |  |  |  |  |  | 80h | 80h |
| 8 | 1.2.2 | **Generic XSM** |  | 35d | 2005-11-16 A | 2006-01-03 A |  | 100% |  |  |  |  |  | 184h | 184h |
| 9 | 1.2.2.1 | Design |  | 2d | 2005-11-16 A | 2005-11-17 A | 5 | 100% |  |  |  |  |  | 16h | 16h |
| 10 | 1.2.2.2 | **Development** |  | 21d | 2005-12-06 A | 2006-01-03 A |  | 100% |  |  |  |  |  | 168h | 168h |
| 11 | 1.2.2.2.1 | ManagedEMS |  | 6d | 2005-12-06 A | 2005-12-13 A | 14 | 100% |  |  |  |  |  | 48h | 48h |
| 12 | 1.2.2.2.2 | Integrate LS commands |  | 15d | 2005-12-14 A | 2006-01-03 A | 11 | 100% |  |  |  |  |  | 120h | 120h |
| 13 | 1.2.3 | **Lighsoft Commands** |  | 420d? | 2005-05-04 A | 2007-01-14 |  | 35% | 273d? | 0d |  |  |  | 928h | 368h |
| 14 | 1.2.3.1 | Design |  | 5d | 2005-11-29 A | 2005-12-05 A |  | 100% |  |  |  |  |  | 40h | 40h |
| 15 | 1.2.3.2 | **Development** |  | 405d? | 2005-05-04 A | 2006-12-24 |  | 38% | 253.12d? | 0d |  |  |  | 768h | 328h |
| 16 | 1.2.3.2.1 | Receive Lightsoft from ECI | milestone | 0d | 2006-01-26 A | 2006-01-26 A |  | 100% |  |  |  | start no earlier than 2006-01-26 | ECI |  |  |
| 17 | 1.2.3.2.2 | Lightsoft setup |  | 2d | 2006-01-26 A | 2006-01-29 A | 16 | 100% |  |  |  |  |  | 16h | 16h |
| 18 | 1.2.3.2.3 | **General Lighsoft Development** |  | 6d | 2006-02-02 A | 2006-02-09 A |  | 100% |  |  |  |  |  | 48h | 48h |
| 19 | 1.2.3.2.3.1 | Open LS Session |  | 3d | 2006-02-02 A | 2006-02-06 A | 17 | 100% |  |  |  |  | Oded Nissan | 24h | 24h |
| 20 | 1.2.3.2.3.2 | Close LS Session |  | 1d | 2006-02-07 A | 2006-02-07 A | 19 | 100% |  |  |  |  | Oded Nissan | 8h | 8h |
| 21 | 1.2.3.2.3.3 | Ping |  | 2d | 2006-02-08 A | 2006-02-09 A | 20 | 100% |  |  |  |  | Oded Nissan | 16h | 16h |
| 22 | 1.2.3.2.4 | **Use Cases** |  | 201d? | 2006-02-12 A | 2006-12-03 | 21 | 28% | 144.47d? | 0d |  |  |  | 312h | 104h |
| 23 | 1.2.3.2.4.1 | **Get all Managed Elements 5.5.2** |  | 2d? | 2006-02-12 A | 2006-02-13 |  |  | 2d? | 137.33d | 2d |  | Oded Nissan | 16h | 8h |
| 24 | 1.2.3.2.4.1.1 | Lighsoft |  | 1d? | 2006-02-12 | 2006-02-12 |  |  |  | 137.33d | 0d |  |  |  |  |
| 25 | 1.2.3.2.4.1.2 | Xsm |  | 1d? | 2006-02-13 | 2006-02-13 | 24 |  |  | 137.33d |  |  |  |  |  |
| 27 | 1.2.3.2.4.2 | Get all Topological Links 5.5.7 |  | 3d | 2006-02-16 A | 2006-02-20 A | 25 | 100% |  |  |  |  | Oded Nissan | 24h | 24h |
| 28 | 1.2.3.2.4.3 | Get all top level Subnetworks |  | 1d? | 2006-02-21 A | 2006-02-21 A | 27 | 100% |  |  |  |  | Oded Nissan | 8h | 8h |
| 29 | 1.2.3.2.4.4 | Get all SNC |  | 1d? | 2006-02-23 A | 2006-02-23 A | 28 | 100% |  |  |  |  | Oded Nissan [300%] | 24h | 24h |
| 30 | 1.2.3.2.4.5 | Get Equipment |  | 3d? | 2006-02-28 A | 2006-03-02 A | 29 | 100% |  |  |  |  | Oded Nissan | 24h | 24h |
| 31 | 1.2.3.2.4.6 | Get All TP |  | 1d? | 2006-03-05 A | 2006-03-05 A | 30 | 100% |  |  |  |  |  | 16h | 16h |
| 32 | 1.2.3.2.4.7 | Receive Lightsoft Equipment |  | 1d? | 2006-11-05 | 2006-11-05 |  |  |  | 0d |  | start no earlier than 2006-11-05 | ECI | 8h |  |
| 33 | 1.2.3.2.4.8 | Get Route |  | 1d? | 2006-11-06 | 2006-11-06 | 32 |  |  | 0d |  |  |  | 24h |  |
| 34 | 1.2.3.2.4.9 | Get active mop |  | 1d? | 2006-11-07 | 2006-11-07 | 33 |  |  | 0d |  |  |  | 24h |  |
| 35 | 1.2.3.2.4.10 | Get all active alarms 5.5.10 |  | 3d | 2006-11-08 | 2006-11-12 | 34 |  |  | 0d |  |  |  | 24h |  |
| 36 | 1.2.3.2.4.11 | Get all alarms on managed Element 5.5.11 |  | 3d | 2006-11-13 | 2006-11-15 | 35 |  |  | 0d |  |  |  | 24h |  |
| 37 | 1.2.3.2.4.12 | Notifications |  | 12d | 2006-11-16 | 2006-12-03 | 36 |  |  | 0d |  |  |  | 96h |  |

Notes:
- 1: We need expertise from IMB WebSphere expert during design and implementation periods. / We need support from ECI side during implementation and tests period./ We need support from System team during implementation and tests periods. / Gantt does not include vacations (except 25-26.04.05), army service, sickness etc.
- 2: Design Document should be written incrementally. This action item could be continued through development process
- 4: Including unit tests
- 8: אינטגרציה עם מיכאל
- 13: לכל פקודה יש לבצע את המשימות

| ID | WBS | Task | Duration | Start | Finish | Predecessors | Complete | Remaining | Total slack | Constraint | Resources | Work | Actual work |
| --- | --- | --- | --- | --- | --- | --- | --- | --- | --- | --- | --- | --- | --- |
| 38 | 1.2.3.2.5 | **XSM Commands** | 405d? | 2005-05-04 A | 2006-12-24 |  | 33% | 273.38d? | 0d |  |  | 392h | 160h |
| 39 | 1.2.3.2.5.1 | Integration with ngoss model | 1d? | 2005-05-04 A | 2005-05-04 A |  | 100% |  |  |  |  | 40h | 40h |
| 40 | 1.2.3.2.5.2 | Translation tables | 3d? | 2005-07-28 A | 2005-08-01 A |  | 100% |  |  | start no earlier than 2005-07-28 | Ran Potstar | 24h | 24h |
| 41 | 1.2.3.2.5.3 | **GetAllManagedElements** | 115d? | 2006-02-16 A | 2006-08-06 | 23 | 33% | 76.67d? | 97d |  |  | 32h | 16h |
| 42 | 1.2.3.2.5.3.1 | development | 1d? | 2006-02-16 A | 2006-02-16 A |  | 100% |  |  |  | Ran Potstar [200%] | 16h | 16h |
| 43 | 1.2.3.2.5.3.2 | integration | 2d? | 2006-08-03 | 2006-08-06 | 46 |  |  | 97d |  | Ran Potstar | 16h |  |
| 44 | 1.2.3.2.5.4 | **Get all Topological Links 5.5.7** | 111d? | 2006-02-20 A | 2006-08-02 A |  | 100% |  |  |  |  | 32h | 32h |
| 45 | 1.2.3.2.5.4.1 | development | 1d? | 2006-02-20 A | 2006-02-20 A |  | 100% |  |  |  | Ran Potstar [200%] | 16h | 16h |
| 46 | 1.2.3.2.5.4.2 | integration | 2d? | 2006-08-01 A | 2006-08-02 A | 49 | 100% |  |  |  | Ran Potstar | 16h | 16h |
| 47 | 1.2.3.2.5.5 | **Get all SNC** | 5d? | 2006-07-25 A | 2006-07-31 A | 23 | 100% |  |  |  |  | 32h | 32h |
| 48 | 1.2.3.2.5.5.1 | development | 1d? | 2006-07-25 A | 2006-07-25 A |  | 100% |  |  |  | Ran Potstar [200%] | 16h | 16h |
| 49 | 1.2.3.2.5.5.2 | integration | 2d? | 2006-07-30 A | 2006-07-31 A | 40 | 100% |  |  | start no earlier than 2006-07-30 | Ran Potstar | 16h | 16h |
| 50 | 1.2.3.2.5.6 | **Get All Equipment** | 4d? | 2006-09-18 A | 2006-09-21 | 49 | 50% | 2d? | 63d |  |  | 32h | 16h |
| 51 | 1.2.3.2.5.6.1 | development | 2d? | 2006-09-18 A | 2006-09-19 A |  | 100% |  |  | start no earlier than 2006-09-18 | Ran Potstar | 16h | 16h |
| 52 | 1.2.3.2.5.6.2 | integration | 2d? | 2006-09-20 | 2006-09-21 | 51 |  |  | 63d |  | Ran Potstar | 16h |  |
| 53 | 1.2.3.2.5.7 | **Get all active alarms 5.5.10** | 2d? | 2006-11-13 | 2006-11-14 | 35 |  |  | 28d |  |  | 32h |  |
| 54 | 1.2.3.2.5.7.1 | development | 2d? | 2006-11-13 | 2006-11-14 |  |  |  | 28d |  | Ran Potstar | 16h |  |
| 55 | 1.2.3.2.5.7.2 | integration | 2d? | 2006-11-13 | 2006-11-14 |  |  |  | 28d |  | Ran Potstar | 16h |  |
| 56 | 1.2.3.2.5.8 | **Get all alarms on managed Element 5.5.11** | 2d? | 2006-11-16 | 2006-11-19 | 36 |  |  | 25d |  |  | 32h |  |
| 57 | 1.2.3.2.5.8.1 | development | 2d? | 2006-11-16 | 2006-11-19 |  |  |  | 25d |  | Ran Potstar | 16h |  |
| 58 | 1.2.3.2.5.8.2 | integration | 2d? | 2006-11-16 | 2006-11-19 |  |  |  | 25d |  | Ran Potstar | 16h |  |
| 59 | 1.2.3.2.5.9 | Notification support | 10d | 2006-12-04 | 2006-12-17 | 37 |  |  | 0d |  |  | 80h |  |
| 60 | 1.2.3.2.5.10 | Events | 5d | 2006-12-18 | 2006-12-24 | 59 |  |  | 0d |  |  | 56h |  |
| 61 | 1.2.3.3 | Unit Test | 15d | 2006-12-25 | 2007-01-14 | 15 |  |  | 0d |  |  | 120h |  |

| ID | WBS | Task | Duration | Start | Finish | Predecessors | Total slack | Work |
| --- | --- | --- | --- | --- | --- | --- | --- | --- |
| 62 | 1.2.4 | **Integration** | 10d | 2007-01-15 | 2007-01-28 | 13 | 0d | 80h |
| 63 | 1.2.4.1 | Lightsoft integration | 10d | 2007-01-15 | 2007-01-28 | 61 | 0d | 80h |
| 64 | 1.2.5 | **Failover support** | 15d | 2007-01-29 | 2007-02-18 | 63 | 0d | 120h |
| 65 | 1.2.5.1 | Design | 2d | 2007-01-29 | 2007-01-30 |  | 0d | 16h |
| 66 | 1.2.5.2 | Development | 10d | 2007-01-31 | 2007-02-13 | 65 | 0d | 80h |
| 67 | 1.2.5.3 | Unit Test | 3d | 2007-02-14 | 2007-02-18 | 66 | 0d | 24h |
